# 软件开发

Schedule from MS Project, 2016-03-02 to 2016-05-30, A marks actual dates.

## Calendars

- 标准: Mon-Fri 08:00-12:00, 13:00-17:00; Sat-Sun off. Exceptions (off unless hours are given): 2016-03-27 08:00-12:00, 13:00-17:00, 2016-04-02 to 2016-04-03 08:00-12:00, 13:00-17:00, 2016-04-09 to 2016-04-10 08:00-12:00, 13:00-17:00, 2016-04-16 to 2016-04-17 08:00-12:00, 13:00-17:00.

## Resources

| Resource |
| --- |
| 管理人员 |
| 项目经理 |
| 分析人员 |
| 开发人员 |
| 测试人员 |
| 培训人员 |
| 技术联络人员 |
| 部署小组 |
| 郑楠 |
| 吴舒然 |
| 张佳 |

## Schedule

| ID | WBS | Task | Duration | Start | Finish | Predecessors | Complete | Constraint | Resources | Work | Actual work |
| --- | --- | --- | --- | --- | --- | --- | --- | --- | --- | --- | --- |
| 1 | 1 | **项目说明** | 31d | 2016-03-02 A | 2016-04-08 A |  | 100% |  |  | 584h | 584h |
| 2 | 1.1 | 确定项目内容 | 40h | 2016-03-02 A | 2016-03-08 A |  | 100% | finish no earlier than 2016-03-08 | 吴舒然; 张佳; 郑楠 | 120h | 120h |
| 3 | 1.2 | 前期调研 | 3d | 2016-03-10 A | 2016-03-14 A | 2 | 100% | finish no earlier than 2016-03-14 | 吴舒然; 张佳; 郑楠 | 72h | 72h |
| 4 | 1.3 | 编写项目计划书 | 14d | 2016-03-16 A | 2016-04-01 A | 3 | 100% | finish no earlier than 2016-04-01 | 吴舒然; 张佳; 郑楠 | 336h | 336h |
| 5 | 1.4 | 可行性分析 | 7d | 2016-04-02 A | 2016-04-08 A | 4 | 100% | finish no earlier than 2016-04-08 | 张佳 | 56h | 56h |
| 6 | 2 | **需求分析** | 27d | 2016-03-23 A | 2016-04-19 A |  | 100% |  |  | 648h | 648h |
| 7 | 2.1 | 行为需求分析 | 6d | 2016-03-23 A | 2016-03-29 A |  | 100% | finish no earlier than 2016-03-29 | 吴舒然; 张佳; 郑楠 | 144h | 144h |
| 8 | 2.2 | **起草初步的需求规格说明书** | 7d | 2016-04-06 A | 2016-04-12 A | 7 | 100% |  |  | 168h | 168h |
| 9 | 2.2.1 | 数据流图绘制 | 7d | 2016-04-06 A | 2016-04-12 A |  | 100% | finish no earlier than 2016-04-11 | 郑楠 | 56h | 56h |
| 10 | 2.2.2 | 起草数据字典 | 7d | 2016-04-06 A | 2016-04-12 A |  | 100% | finish no earlier than 2016-04-11 | 张佳 | 56h | 56h |
| 11 | 2.2.3 | 状态转化图绘制 | 7d | 2016-04-06 A | 2016-04-12 A |  | 100% | finish no earlier than 2016-04-11 | 吴舒然 | 56h | 56h |
| 12 | 2.3 | **根据反馈修改规格说明书** | 14d | 2016-04-06 A | 2016-04-19 A |  | 100% |  |  | 336h | 336h |
| 13 | 2.3.1 | ER图绘制 | 7d | 2016-04-06 A | 2016-04-12 A |  | 100% | finish no earlier than 2016-04-09 | 郑楠 | 56h | 56h |
| 14 | 2.3.2 | 层次方框图绘制 | 7d | 2016-04-06 A | 2016-04-12 A |  | 100% | finish no earlier than 2016-04-09 | 郑楠 | 56h | 56h |
| 15 | 2.3.3 | IPO表制作 | 7d | 2016-04-06 A | 2016-04-12 A |  | 100% | finish no earlier than 2016-04-09 | 郑楠 | 56h | 56h |
| 16 | 2.3.4 | 起草用户手册 | 7d | 2016-04-06 A | 2016-04-12 A |  | 100% | finish no earlier than 2016-04-09 | 张佳; 郑楠 | 112h | 112h |
| 17 | 2.3.5 | 数据字典初步定义 | 7d | 2016-04-13 A | 2016-04-19 A |  | 100% | start no earlier than 2016-04-13 | 郑楠 | 56h | 56h |
| 18 | 3 | **设计工作完成** | 27d? | 2016-04-06 A | 2016-05-06 A |  | 100% |  |  | 1056h | 1056h |
| 19 | 3.1 | **总体设计** | 19d? | 2016-04-06 A | 2016-04-26 A |  | 100% |  |  | 432h | 432h |
| 20 | 3.1.1 | 起草总体设计文档 | 14d | 2016-04-06 A | 2016-04-19 A |  | 100% | finish no earlier than 2016-04-19 | 张佳 | 112h | 112h |
| 21 | 3.1.2 | **细化总体文档** | 5d? | 2016-04-20 A | 2016-04-26 A | 20 | 100% |  |  | 320h | 320h |
| 22 | 3.1.2.1 | 总体设计说明 | 5d? | 2016-04-20 A | 2016-04-26 A |  | 100% | finish no earlier than 2016-04-26 | 张佳 | 40h | 40h |
| 23 | 3.1.2.2 | 系统说明 | 5d? | 2016-04-20 A | 2016-04-26 A |  | 100% | start no earlier than 2016-04-20 | 吴舒然; 郑楠 | 80h | 80h |
| 24 | 3.1.2.3 | 用户手册 | 5d? | 2016-04-20 A | 2016-04-26 A |  | 100% | start no earlier than 2016-04-20 | 张佳 | 40h | 40h |

| ID | WBS | Task | Type | Duration | Start | Finish | Predecessors | Complete | Total slack | Constraint | Resources | Work | Actual work |
| --- | --- | --- | --- | --- | --- | --- | --- | --- | --- | --- | --- | --- | --- |
| 25 | 3.1.2.4 | **测试计划** |  | 5d? | 2016-04-20 A | 2016-04-26 A |  | 100% |  |  |  | 160h | 160h |
| 26 | 3.1.2.4.1 | 测试策略 |  | 5d? | 2016-04-20 A | 2016-04-26 A |  | 100% |  | start no earlier than 2016-04-20 | 吴舒然 | 40h | 40h |
| 27 | 3.1.2.4.2 | 测试方案 |  | 5d? | 2016-04-20 A | 2016-04-26 A |  | 100% |  | start no earlier than 2016-04-20 | 吴舒然 | 40h | 40h |
| 28 | 3.1.2.4.3 | 预测测试结果 |  | 5d? | 2016-04-20 A | 2016-04-26 A |  | 100% |  | start no earlier than 2016-04-20 | 吴舒然 | 40h | 40h |
| 29 | 3.1.2.4.4 | 测试进度计划 |  | 5d? | 2016-04-20 A | 2016-04-26 A |  | 100% |  | start no earlier than 2016-04-20 | 吴舒然 | 40h | 40h |
| 30 | 3.2 | **详细设计** |  | 13d? | 2016-04-20 A | 2016-05-06 A |  | 100% |  |  |  | 624h | 624h |
| 31 | 3.2.1 | **详细实践** |  | 13d? | 2016-04-20 A | 2016-05-06 A |  | 100% |  |  |  | 624h | 624h |
| 32 | 3.2.1.1 | 数据库设计结果 |  | 5d? | 2016-04-20 A | 2016-04-26 A |  | 100% |  | start no earlier than 2016-04-20 | 郑楠 | 40h | 40h |
| 33 | 3.2.1.2 | 详细实现计划 |  | 5d? | 2016-04-27 A | 2016-05-03 A | 19 | 100% |  |  | 郑楠 | 40h | 40h |
| 34 | 3.2.1.3 | N-S图 |  | 5d? | 2016-04-27 A | 2016-05-03 A |  | 100% |  | finish no earlier than 2016-05-03 | 郑楠; 张佳; 吴舒然 | 120h | 120h |
| 35 | 3.2.1.4 | PAD图 |  | 5d? | 2016-04-27 A | 2016-05-03 A |  | 100% |  | finish no earlier than 2016-05-03 | 郑楠; 张佳; 吴舒然 | 120h | 120h |
| 36 | 3.2.1.5 | Jackson |  | 5d? | 2016-04-27 A | 2016-05-03 A |  | 100% |  | finish no earlier than 2016-05-03 | 郑楠; 张佳; 吴舒然 | 120h | 120h |
| 37 | 3.2.1.6 | 判定树/判定表 |  | 5d? | 2016-04-27 A | 2016-05-03 A |  | 100% |  | finish no earlier than 2016-05-03 | 郑楠; 张佳; 吴舒然 | 120h | 120h |
| 38 | 3.2.1.7 | PDL |  | 5d? | 2016-04-27 A | 2016-05-03 A |  | 100% |  | finish no earlier than 2016-05-03 | 郑楠 | 40h | 40h |
| 39 | 3.2.1.8 | 第二次访谈 |  | 1d? | 2016-05-06 A | 2016-05-06 A |  | 100% |  | start no earlier than 2016-05-06 | 郑楠; 张佳; 吴舒然 | 24h | 24h |
| 40 | 4 | 编码 | milestone | 0d | 2016-05-30 | 2016-05-30 |  |  | 0d | start no earlier than 2016-05-30 |  |  |  |
| 41 | 5 | 测试 | milestone | 0d | 2016-05-30 | 2016-05-30 |  |  | 0d | start no earlier than 2016-05-30 |  |  |  |
| 42 | 6 | 维护 | milestone | 0d | 2016-05-30 | 2016-05-30 |  |  | 0d | start no earlier than 2016-05-30 |  |  |  |
| 43 | 7 | 总结 | milestone | 0d | 2016-05-30 | 2016-05-30 |  |  | 0d | start no earlier than 2016-05-30 |  |  |  |
